Schedule from Planner, 2018-09-03 to 2019-01-15.

## Calendars

- Default: Mon-Fri 08:00-12:00, 13:00-17:00; Sat-Sun off.

## Resources

| Resource |
| --- |
| Bernardo |
| nobody |

## Schedule

| ID | WBS | Task | Type | Duration | Start | Finish | Predecessors | Complete | Constraint | Work |
| --- | --- | --- | --- | --- | --- | --- | --- | --- | --- | --- |
| 1 | 1 | **Modelo dinâmico do motor** |  |  | 2018-09-03 | 2018-10-26 |  |  |  | 320h |
| 2 | 1.1 | Elaborar formulação teórica |  |  | 2018-09-03 | 2018-09-14 |  |  |  | 80h |
| 3 | 1.2 | **Implementação computacional** |  |  | 2018-09-17 | 2018-09-28 |  |  |  | 80h |
| 4 | 1.2.1 | Definir arquitetura |  |  | 2018-09-17 | 2018-09-21 | 2 |  |  | 40h |
| 5 | 1.2.2 | Implementar modelo |  |  | 2018-09-24 | 2018-09-28 | 4 |  |  | 40h |
| 6 | 1.3 | **Testes e estimativa de parâmetros** |  |  | 2018-10-01 | 2018-10-19 |  |  |  | 120h |
| 7 | 1.3.1 | Definir programa de testes |  |  | 2018-10-01 | 2018-10-05 | 2 |  | start no earlier than 2018-09-30 | 40h |
| 8 | 1.3.2 | Preparar testes |  |  | 2018-10-08 | 2018-10-12 | 7 |  |  | 40h |
| 9 | 1.3.3 | Realizar testes |  |  | 2018-10-15 | 2018-10-19 | 8 |  |  | 40h |
| 10 | 1.4 | Obter parâmetros do motor através do pós-processamento de dados dos testes |  |  | 2018-10-22 | 2018-10-26 | 9, 5 |  |  | 40h |
| 11 | 1.5 | Primeira versão do modelo do motor | milestone | 0d | 2018-10-26 | 2018-10-26 | 10 |  |  |  |
| 12 | 2 | **FADEC** |  |  | 2018-10-29 | 2019-01-15 |  |  |  | 480h |
| 13 | 2.1 | Revisão da literatura |  |  | 2018-10-29 | 2018-11-02 |  |  | start no earlier than 2018-10-28 | 40h |
| 14 | 2.2 | Definir entradas e saídas do sistema |  |  | 2018-11-05 | 2018-11-09 | 13 |  |  | 40h |
| 15 | 2.3 | Elaborar formulação teórica do controlador |  |  | 2018-11-12 | 2018-11-16 | 14 |  |  | 40h |
| 16 | 2.4 | **Implementação em microcontrolador** |  |  | 2018-11-05 | 2018-11-29 |  |  |  | 80h |
| 17 | 2.4.1 | Definir hardware a ser utilizado |  |  | 2018-11-05 | 2018-11-05 | 13 |  |  | 8h |
| 18 | 2.4.2 | Definir estrutura do código |  |  | 2018-11-19 | 2018-11-22 | 17, 15 |  |  | 32h |
| 19 | 2.4.3 | Implementar controlador |  |  | 2018-11-23 | 2018-11-29 | 18 |  |  | 40h |
| 20 | 2.5 | **Testes secos (simulados)** |  |  | 2018-11-19 | 2019-01-01 |  |  |  | 160h |
| 21 | 2.5.1 | Integrar o código do controlador com o modelo do motor |  |  | 2018-11-30 | 2018-12-06 | 19 |  |  | 40h |
| 22 | 2.5.2 | Definir programa de testes |  |  | 2018-11-19 | 2018-11-20 | 15 | 100% |  | 16h |
| 23 | 2.5.3 | Codificar e realizar testes |  |  | 2018-12-07 | 2018-12-11 | 21, 22 |  |  | 24h |
| 24 | 2.5.4 | Obter ganhos do controlador através do pós-processamento de dados dos testes secos |  |  | 2018-12-12 | 2018-12-18 | 23 |  |  | 40h |
| 25 | 2.5.5 | Simular testes molhados (hardware in the loop) |  |  | 2018-12-26 | 2019-01-01 | 27 |  |  | 40h |

| ID | WBS | Task | Type | Duration | Start | Finish | Predecessors | Work |
| --- | --- | --- | --- | --- | --- | --- | --- | --- |
| 26 | 2.6 | **Testes molhados (com o motor)** |  |  | 2018-12-19 | 2019-01-15 |  | 120h |
| 27 | 2.6.1 | Definir programa de testes |  |  | 2018-12-19 | 2018-12-25 | 24, 22 | 40h |
| 28 | 2.6.2 | Preparar testes |  |  | 2019-01-02 | 2019-01-08 | 25, 27 | 40h |
| 29 | 2.6.3 | Realizar testes |  |  | 2019-01-09 | 2019-01-15 | 28 | 40h |
| 30 | 2.7 | FADEC pronto e validado | milestone | 0d | 2019-01-15 | 2019-01-15 | 29 |  |
